# UUPon PWA阶段一

How a schedule from a web Gantt chart changed from version to version. A marks actual dates.

## Version 1 (saved 2024-06-12)

| ID | Task | Duration | Start | Finish | Predecessors | Complete |
| --- | --- | --- | --- | --- | --- | --- |
| 2 | 需求确认 | 3d | 2024-05-27 | 2024-05-29 |  | 100% |
| 3 | 地图模式UIUX交付 | 1d | 2024-05-29 | 2024-05-29 |  | 100% |
| 4 | PWA框架确认、开发 | 3d | 2024-06-03 | 2024-06-05 |  | 100% |
| 5 | 地图框架确认、开发 | 3d | 2024-06-05 | 2024-06-07 |  | 100% |
| 6 | MIFF框架确认开发 | 2d | 2024-06-12 | 2024-06-13 |  | 100% |
| 7 | 商家列表页面UIUX交付 | 15d | 2024-06-03 | 2024-06-21 |  |  |
| 8 | UserCode 模式整合开发 | 1d | 2024-06-10 | 2024-06-10 |  | 100% |
| 9 | 玩任务列表 | 3d | 2024-06-11 | 2024-06-13 | 8 | 50% |
| 10 | UUPon 页签列表 | 1d | 2024-06-11 | 2024-06-11 | 8 |  |
| 11 | 我的页面相关API开发 | 3d | 2024-06-12 | 2024-06-14 |  | 50% |
| 12 | 我的页面开发 | 3d | 2024-06-17 | 2024-06-19 | 11 |  |
| 13 | 注册用户以及资料补全相关 | 2d | 2024-06-20 | 2024-06-21 | 12 |  |
| 14 | PWA模式安装提示页面开发 | 2d | 2024-06-24 | 2024-06-25 |  |  |
| 15 | 测试并提供 | 5d | 2024-06-24 | 2024-06-28 |  |  |
| 16 | Demo UAT 以及后续发版 | 1d | 2024-07-01 | 2024-07-01 |  |  |

## Version 2 (saved 2024-06-12)

Last finish 2024-07-01 → 2024-08-09 (+39d).

Added:

| ID | Task | Duration | Start | Finish | Predecessors |
| --- | --- | --- | --- | --- | --- |
| 2 | **UUPon PWA 阶段一** | 16d | 2024-05-27 | 2024-06-17 |  |
| 15 | 商家列表页面开发 | 1d | 2024-06-17 | 2024-06-17 | 8 |
| 19 | **UUPon PWA 阶段二** | 30d | 2024-07-01 | 2024-08-09 |  |
| 20 | 结合阶段一讨论后续发展规划 | 3d | 2024-07-01 | 2024-07-03 |  |
| 21 | 阶段二UIUX产出交付 | 7d | 2024-07-04 | 2024-07-12 | 20 |
| 22 | AIPool Server API 支援开发 | 5d | 2024-07-15 | 2024-07-19 | 21 |
| 23 | UUPon PWA 前端调整和开发 | 10d | 2024-07-22 | 2024-08-02 | 22 |
| 24 | Demo UAT 以及后续发版 | 5d | 2024-08-05 | 2024-08-09 | 23 |

Changed:

| ID | Task | Start | Finish |
| --- | --- | --- | --- |
| 4 | 地图模式UIUX交付 | 2024-05-29 → 2024-05-27 (-2d) | 2024-05-29 → 2024-05-27 (-2d) |
| 5 | PWA框架确认、开发 | 2024-06-03 → 2024-05-27 (-7d) | 2024-06-05 → 2024-05-29 (-7d) |
| 6 | 地图框架确认、开发 | 2024-06-05 → 2024-05-27 (-9d) | 2024-06-07 → 2024-05-29 (-9d) |
| 7 | MIFF框架确认开发 | 2024-06-12 → 2024-05-27 (-16d) | 2024-06-13 → 2024-05-28 (-16d) |
| 8 | 商家列表页面UIUX交付 | 2024-06-03 → 2024-05-27 (-7d) | 2024-06-21 → 2024-06-14 (-7d) |
| 9 | UserCode 模式整合开发 | 2024-06-10 → 2024-05-27 (-14d) | 2024-06-10 → 2024-05-27 (-14d) |
| 10 | 玩任务列表 | 2024-06-11 → 2024-05-28 (-14d) | 2024-06-13 → 2024-05-30 (-14d) |
| 11 | UUPon 页签列表 | 2024-06-11 → 2024-05-28 (-14d) | 2024-06-11 → 2024-05-28 (-14d) |
| 12 | 我的页面相关API开发 | 2024-06-12 → 2024-05-27 (-16d) | 2024-06-14 → 2024-05-29 (-16d) |
| 13 | 我的页面开发 | 2024-06-17 → 2024-05-30 (-18d) | 2024-06-19 → 2024-06-03 (-16d) |
| 14 | 注册用户以及资料补全相关 | 2024-06-20 → 2024-06-04 (-16d) | 2024-06-21 → 2024-06-05 (-16d) |
| 16 | PWA模式安装提示页面开发 | 2024-06-24 → 2024-05-27 (-28d) | 2024-06-25 → 2024-05-28 (-28d) |
| 17 | 测试并提供 | 2024-06-24 → 2024-05-27 (-28d) | 2024-06-28 → 2024-05-31 (-28d) |
| 18 | Demo UAT 以及后续发版 | 2024-07-01 → 2024-05-27 (-35d) | 2024-07-01 → 2024-05-27 (-35d) |
